# Project LIMS Initiation

Schedule from MS Project, 2026-01-05 to 2026-03-13, status date 2026-02-19, costs in $, A marks actual dates.

## Calendars

- Standard: Mon-Fri 08:00-12:00, 13:00-17:00; Sat-Sun off.

## Resources

| Resource | Rate |
| --- | --- |
| Project Manager | 44 |
| System Analyst/ Developer | 40 |
| Travel Expenses |  |

## Schedule

| ID | WBS | Task | Duration | Start | Finish | Predecessors | Complete | Actual finish | Constraint | Resources | Work | Actual work | Cost | Actual cost |
| --- | --- | --- | --- | --- | --- | --- | --- | --- | --- | --- | --- | --- | --- | --- |
| 1 | 1 | **Draft** | 15d | 2026-01-05 A | 2026-01-23 A |  | 100% |  |  |  | 120h | 120h | 5,280 | 5,280 |
| 2 | 1.1 | Create Work Schedule/Gantt Chart | 9d | 2026-01-05 A | 2026-01-15 A |  | 100% |  | finish no earlier than 2026-01-15 | Project Manager | 72h | 72h | 3,168 | 3,168 |
| 3 | 1.2 | Create Project Statement | 6d | 2026-01-16 A | 2026-01-23 A | 2 | 100% |  | finish no earlier than 2026-01-23 | Project Manager | 48h | 48h | 2,112 | 2,112 |
| 4 | 2 | **System Analysis** | 8d | 2026-01-26 A | 2026-02-04 |  | 100% | 2026-02-03 |  |  | 64h | 64h | 2,656 | 2,656 |
| 5 | 2.1 | Meet with Key Stakeholders | 2d | 2026-01-26 A | 2026-01-27 A | 3SS | 100% |  |  | Project Manager; Travel Expenses [0.1%] | 16h | 16h | 704 | 704 |
| 6 | 2.2 | Event based analysis | 1d | 2026-01-28 A | 2026-01-28 A | 5 | 100% |  |  | Project Manager; System Analyst/ Developer | 16h | 16h | 672 | 672 |
| 7 | 2.3 | Creat domain class diagram | 1d | 2026-01-29 A | 2026-01-29 A | 6 | 100% |  |  | System Analyst/ Developer | 8h | 8h | 320 | 320 |
| 8 | 2.4 | Create single use case diagrams | 1d | 2026-01-30 A | 2026-01-30 A | 7 | 100% |  |  | System Analyst/ Developer | 8h | 8h | 320 | 320 |
| 9 | 2.5 | Create fully developed use case descriptions | 1d | 2026-02-02 A | 2026-02-02 A | 8 | 100% |  |  | System Analyst/ Developer | 8h | 8h | 320 | 320 |
| 10 | 2.6 | Create SSDs | 1d | 2026-02-03 A | 2026-02-03 A | 9 | 100% |  |  | System Analyst/ Developer | 8h | 8h | 320 | 320 |
| 11 | 3 | **System Design** | 15d | 2026-02-04 A | 2026-02-24 A |  | 100% |  |  |  | 128h | 128h | 5,152 | 5,152 |
| 12 | 3.1 | Architectural Design | 1d | 2026-02-04 A | 2026-02-04 A | 10 | 100% |  |  | System Analyst/ Developer; Project Manager | 16h | 16h | 672 | 672 |
| 13 | 3.2 | Create design class diagram | 2d | 2026-02-05 A | 2026-02-06 A | 12 | 100% |  | finish no earlier than 2026-02-05 | System Analyst/ Developer | 16h | 16h | 640 | 640 |
| 14 | 3.3 | Create Three-layered sequence diagram | 2d | 2026-02-09 A | 2026-02-10 A | 13 | 100% |  |  | System Analyst/ Developer | 16h | 16h | 640 | 640 |
| 15 | 3.4 | Create package diagram | 2d | 2026-02-11 A | 2026-02-12 A | 14 | 100% |  |  | System Analyst/ Developer | 16h | 16h | 640 | 640 |
| 16 | 3.5 | Create ERD | 2d | 2026-02-13 A | 2026-02-16 A | 15 | 100% |  | finish no earlier than 2026-02-10 | System Analyst/ Developer | 16h | 16h | 640 | 640 |
| 17 | 3.6 | Create Reports for selected output use cases | 3d | 2026-02-17 A | 2026-02-19 A | 16 | 100% |  |  | System Analyst/ Developer | 24h | 24h | 960 | 960 |
| 18 | 3.7 | Create UI for selected input use cases | 2d | 2026-02-20 A | 2026-02-23 A | 17 | 100% |  |  | System Analyst/ Developer | 16h | 16h | 640 | 640 |
| 19 | 3.8 | System Controls and Security | 1d | 2026-02-24 A | 2026-02-24 A | 14FF | 100% |  | finish no earlier than 2026-02-24 | System Analyst/ Developer | 8h | 8h | 320 | 320 |
| 20 | 4 | **System Implementation** | 16d | 2026-02-16 A | 2026-03-09 A |  | 100% |  |  |  | 128h | 128h | 5,440 | 5,440 |
| 21 | 4.1 | Database Implementation | 2d | 2026-02-16 A | 2026-02-17 A |  | 100% |  | start no earlier than 2026-02-16 | Project Manager | 16h | 16h | 704 | 704 |
| 22 | 4.2 | Coding | 8d | 2026-02-18 A | 2026-02-27 A | 21 | 100% |  |  | Project Manager | 64h | 64h | 2,816 | 2,816 |
| 23 | 4.3 | Testing | 5d | 2026-03-02 A | 2026-03-06 A | 22 | 100% |  |  | System Analyst/ Developer | 40h | 40h | 1,600 | 1,600 |
| 24 | 4.4 | Documentation | 1d | 2026-03-09 A | 2026-03-09 A | 23 | 100% |  |  | System Analyst/ Developer | 8h | 8h | 320 | 320 |

| ID | WBS | Task | Duration | Start | Finish | Predecessors | Complete | Constraint | Resources | Work | Actual work | Cost | Actual cost |
| --- | --- | --- | --- | --- | --- | --- | --- | --- | --- | --- | --- | --- | --- |
| 25 | 5 | **Deployment** | 4d | 2026-03-10 A | 2026-03-13 A |  | 100% |  |  | 48h | 48h | 2,048 | 2,048 |
| 26 | 5.1 | Convert/Initialize Data | 1d | 2026-03-10 A | 2026-03-10 A |  | 100% | start no earlier than 2026-03-10 | Project Manager | 8h | 8h | 352 | 352 |
| 27 | 5.2 | Training/Documentation | 1d | 2026-03-11 A | 2026-03-11 A | 26 | 100% |  | Project Manager | 8h | 8h | 352 | 352 |
| 28 | 5.3 | User Acceptance/Stress testing | 1d | 2026-03-12 A | 2026-03-12 A | 27 | 100% |  | Project Manager; System Analyst/ Developer | 16h | 16h | 672 | 672 |
| 29 | 5.4 | Configure the Production Environment | 1d | 2026-03-13 A | 2026-03-13 A | 28 | 100% |  | Project Manager | 8h | 8h | 352 | 352 |
| 30 | 5.5 | Package, Install, and Deploy Components | 1d | 2026-03-13 A | 2026-03-13 A | 28 | 100% |  | System Analyst/ Developer | 8h | 8h | 320 | 320 |
| 31 | 6 | **Reporting** | 31d | 2026-01-30 A | 2026-03-13 A |  | 100% |  |  | 32h | 32h | 1,408 | 1,408 |
| 32 | 6.1 | Status Report 1 | 1d | 2026-01-30 A | 2026-01-30 A | 3 | 100% | start no earlier than 2026-01-30 | Project Manager | 8h | 8h | 352 | 352 |
| 33 | 6.2 | Status Report 2 | 1d | 2026-02-20 A | 2026-02-20 A | 10FF | 100% | start no earlier than 2026-02-20 | Project Manager | 8h | 8h | 352 | 352 |
| 34 | 6.3 | Status Report 3 | 1d | 2026-03-06 A | 2026-03-06 A | 19FF | 100% | start no earlier than 2026-03-06 | Project Manager | 8h | 8h | 352 | 352 |
| 35 | 6.4 | Status Report 4 | 1d | 2026-03-13 A | 2026-03-13 A | 19FF | 100% | start no earlier than 2026-03-13 | Project Manager | 8h | 8h | 352 | 352 |
